# Toasted Timeline

Schedule from MS Project, 2007-01-16 to 2007-04-16, A marks actual dates.
DigiPen Institute Of Technology

## Calendars

- Standard: Mon-Fri 08:00-12:00, 13:00-17:00; Sat-Sun off.

## Resources

| Resource |
| --- |
| Chris |
| Sheridan |
| Mike |
| Cullen |
| Paul |
| All |
| 44 |

## Schedule

| ID | WBS | Task | Duration | Start | Finish | Predecessors | Complete | Remaining | Total slack | Free slack | Constraint | Resources | Work | Actual work |
| --- | --- | --- | --- | --- | --- | --- | --- | --- | --- | --- | --- | --- | --- | --- |
| 1 | 1 | First team meeting | 4h | 2007-01-16 | 2007-01-16 |  |  |  | 12d | 0d |  | All | 4h |  |
| 2 | 2 | Write TDD | 4d | 2007-01-16 A | 2007-01-22 A | 1 | 100% |  |  |  | finish no earlier than 2007-01-21 | Chris | 32h | 32h |
| 3 | 3 | Outline Database | 4.5d | 2007-01-16 A | 2007-01-22 A | 1 | 100% |  |  |  | finish no earlier than 2007-01-22 | Sheridan | 36h | 36h |
| 4 | 4 | **First Deliverable Prototype** | 10d | 2007-01-23 A | 2007-02-05 A | 3 | 100% |  |  |  |  | All | 400h | 400h |
| 5 | 4.1 | Basic Level Loader | 5d | 2007-01-23 A | 2007-01-29 A | 3 | 100% |  |  |  | start no earlier than 2007-01-23 | Sheridan | 40h | 40h |
| 6 | 4.2 | Basic Player movement created | 3d | 2007-01-30 A | 2007-02-01 A | 5 | 100% |  |  |  |  | Sheridan | 24h | 24h |
| 7 | 4.3 | Enemy framework completed | 8d | 2007-01-23 A | 2007-02-01 A | 3 | 100% |  |  |  | start no earlier than 2007-01-23 | Paul | 64h | 64h |
| 8 | 4.4 | Basic Collision system completed | 3d | 2007-01-23 A | 2007-01-25 A | 1 | 100% |  |  |  |  | Cullen | 24h | 24h |
| 9 | 4.5 | Weapon framework completed | 5d | 2007-01-26 A | 2007-02-01 A | 8 | 100% |  |  |  | start no earlier than 2007-01-23 | Cullen | 40h | 40h |
| 10 | 4.6 | Basic UI created | 8d | 2007-01-23 A | 2007-02-01 A | 3 | 100% |  |  |  | start no earlier than 2007-01-23 | Mike | 64h | 64h |
| 11 | 4.7 | Graphics engine completed | 8d | 2007-01-23 A | 2007-02-01 A | 3 | 100% |  |  |  |  | Chris | 64h | 64h |
| 12 | 4.8 | Code Integration | 2d | 2007-02-02 A | 2007-02-05 A | 11, 10, 9, 6, 7 | 100% |  |  |  | finish no earlier than 2007-02-05 |  |  |  |
| 13 | 5 | President's Day | 1d | 2007-02-19 | 2007-02-19 |  |  |  | 35d |  | start no earlier than 2007-02-19 |  |  |  |
| 14 | 6 | **Alpha Deliverable** | 15d? | 2007-02-06 A | 2007-02-26 |  | 93% | 1.1d? | 8d | 0d |  | All | 528h | 527.77h |
| 15 | 6.1 | Final boss | 9d | 2007-02-06 A | 2007-02-16 A | 4 | 100% |  |  |  | finish no earlier than 2007-01-10 | Chris | 72h | 72h |
| 16 | 6.2 | Status screen completed | 6d | 2007-02-06 A | 2007-02-13 A | 4 | 100% |  |  |  | start no earlier than 2007-02-06 | Mike | 48h | 48h |
| 17 | 6.3 | Menu screens completed | 3d | 2007-02-14 A | 2007-02-16 A | 16 | 100% |  |  |  | start no earlier than 2007-02-14 | Mike | 24h | 24h |
| 18 | 6.4 | Get sound working | 2d | 2007-02-06 A | 2007-02-07 A | 4 | 100% |  |  |  | start no earlier than 2007-02-06 | Sheridan | 16h | 16h |
| 19 | 6.5 | Work on Pickups | 7d | 2007-02-08 A | 2007-02-16 A | 18 | 100% |  |  |  | start no earlier than 2007-02-08 | Sheridan | 56h | 56h |
| 20 | 6.6 | Collision system completed | 5d | 2007-02-06 A | 2007-02-12 A | 4 | 100% |  |  |  | start no earlier than 2007-02-06 | Cullen | 40h | 40h |
| 21 | 6.7 | Weapons completed | 4d | 2007-02-13 A | 2007-02-16 A | 20 | 100% |  |  |  | finish no earlier than 2007-02-16 | Cullen | 32h | 32h |
| 22 | 6.8 | Enemies completed | 9d | 2007-02-06 A | 2007-02-16 A | 4 | 100% |  |  |  | start no earlier than 2007-02-06 | Paul | 72h | 72h |
| 23 | 6.9 | Miniboss Battles Completed | 5d? | 2007-02-19 A | 2007-02-23 |  | 18% | 4.1d? | 19d |  | finish no earlier than 2007-02-23 |  |  |  |
| 24 | 6.10 | Make maps | 1d | 2007-02-19 A | 2007-02-19 A | 15, 17, 18, 21, 23 | 100% |  |  |  | start no earlier than 2007-02-19 | All | 8h | 8h |
| 25 | 6.11 | Boss battles for all levels completed | 3d | 2007-02-20 A | 2007-02-22 A | 24 | 100% |  |  |  |  | All | 24h | 24h |
| 26 | 6.12 | Code Integration | 2d | 2007-02-23 A | 2007-02-26 A | 25 | 100% |  |  |  |  | All | 16h | 16h |

| ID | WBS | Task | Duration | Start | Finish | Predecessors | Total slack | Free slack | Constraint | Resources | Work |
| --- | --- | --- | --- | --- | --- | --- | --- | --- | --- | --- | --- |
| 27 | 7 | **Focus Group** | 3d | 2007-02-27 | 2007-03-01 | 14 | 8d |  |  | All | 64h |
| 28 | 7.1 | Compile data | 1d | 2007-03-01 | 2007-03-01 |  | 38d |  | start no earlier than 2007-03-01 | All | 8h |
| 29 | 7.2 | Hold focus group | 1d | 2007-02-28 | 2007-02-28 |  | 39d |  | start no earlier than 2007-02-28 | All | 8h |
| 30 | 7.3 | Make presentation to class for focus group info | 3d | 2007-02-27 | 2007-03-01 |  | 18d | 7d |  | All | 24h |
| 31 | 8 | **Marketing materials** | 15d | 2007-02-27 | 2007-03-19 |  | 20d |  |  |  | 120h |
| 32 | 8.1 | Begin marketing assets | 10d | 2007-02-27 | 2007-03-12 | 14 | 26d | 0d |  | Cullen | 80h |
| 33 | 8.2 | Finish marketing assets | 5d | 2007-03-13 | 2007-03-19 | 32 | 26d |  |  | All | 40h |
| 34 | 9 | Spring Break | 5d | 2007-03-05 | 2007-03-09 |  | 26d |  | start no earlier than 2007-03-05 | All | 40h |
| 35 | 10 | **Beta Polishing** | 25d? | 2007-03-13 | 2007-04-16 | 30 | 0d |  |  | All | 944h |
| 36 | 10.1 | Focus Group implementation meeting | 1d | 2007-03-13 | 2007-03-13 |  | 1d | 0d | finish no earlier than 2007-03-13 | All | 8h |
| 37 | 10.2 | HUD tweaking | 15d | 2007-03-14 | 2007-04-03 | 36 | 1d | 0d | finish no earlier than 2007-04-02 | Mike | 120h |
| 38 | 10.3 | Credits, splash and Intro screen | 8d | 2007-04-04 | 2007-04-13 | 37 | 1d |  | finish no earlier than 2007-04-13 | Mike | 64h |
| 39 | 10.4 | turret system completed | 14d | 2007-03-14 | 2007-04-02 | 36 | 9d | 0d | start no earlier than 2007-03-14 | Chris | 112h |
| 40 | 10.5 | finalize particle system | 1d? | 2007-04-03 | 2007-04-03 | 39 | 9d |  |  | Chris | 8h |
| 41 | 10.6 | Level Progression changes | 8d? | 2007-03-14 | 2007-03-23 | 36 | 5d |  | finish no earlier than 2007-03-23 | Paul | 64h |
| 42 | 10.7 | Tutorial level | 10d | 2007-04-02 | 2007-04-13 | 41 | 0d |  | finish no earlier than 2007-04-13 | Paul | 80h |
| 43 | 10.8 | Grenades | 14d? | 2007-03-14 | 2007-04-02 | 36 | 9d |  | finish no earlier than 2007-04-02 | Cullen | 112h |
| 44 | 10.9 | more textured backgrounds | 14d | 2007-03-14 | 2007-04-02 | 36 | 2d | 0d | start no earlier than 2007-03-14 | Sheridan | 112h |
| 45 | 10.10 | Work on sound system | 4d? | 2007-04-03 | 2007-04-06 | 44 | 2d | 0d | finish no earlier than 2007-04-06 | Sheridan | 32h |
| 46 | 10.11 | Obtain Executable File | 3d | 2007-04-11 | 2007-04-13 | 45 | 0d |  | finish no earlier than 2007-04-13 | Sheridan | 24h |
| 47 | 10.12 | Final code compilation | 1d | 2007-04-16 | 2007-04-16 | 43, 42, 39, 46 | 0d |  |  | All | 8h |
| 48 | 11 | Project Materials Due | 1d | 2007-04-02 | 2007-04-02 | 36 | 8d | 4d | start no earlier than 2007-04-02 | All | 8h |
| 49 | 12 | Code Audits | 1d | 2007-04-09 | 2007-04-09 | 48 | 4d |  | start no earlier than 2007-04-09 | All | 8h |
| 50 | 13 | BETA DUE | 1d | 2007-04-16 | 2007-04-16 | 49 | 0d |  | start no earlier than 2007-04-16 | All | 8h |
